# FeedOmeter Product Evolution (7-Phase Roadmap)

Schedule from MS Project XML, 2026-09-01 to 2026-11-30, status date 2026-09-18.
FeedOmeter

## Schedule

| ID | WBS | Task | Duration | Start | Finish | Predecessors | Complete |
| --- | --- | --- | --- | --- | --- | --- | --- |
| 2 | 1 | **Phase 1: RSS Feed Reader & Infrastructure Foundation** | 33d | 2026-09-01 | 2026-09-17 |  | 100% |
| 3 | 1.1 | [P1-01] Domain & Cloud Infrastructure Setup | 3d | 2026-09-01 | 2026-09-17 |  | 100% |
| 4 | 1.2 | [P1-02] GitHub Repository & Production Build Pipeline | 3d | 2026-09-01 | 2026-09-17 | 3 | 100% |
| 5 | 1.3 | [P1-03] Cloudflare D1 Database & KV Schema Architecture | 4d | 2026-09-01 | 2026-09-17 | 4 | 100% |
| 6 | 1.4 | [P1-04] Cloudflare Edge Worker API & Routing Engine | 5d | 2026-09-01 | 2026-09-17 | 5 | 100% |
| 7 | 1.5 | [P1-05] Universal XML Parsing & Layer A Image Extraction | 4d | 2026-09-01 | 2026-09-17 | 6 | 100% |
| 8 | 1.6 | [P1-06] URL Canonicalization, Deduplication & Safety Moderation | 3d | 2026-09-01 | 2026-09-17 | 7 | 100% |
| 9 | 1.7 | [P1-07] Server-Side Async Hero Image Enrichment & KV Caching | 4d | 2026-09-01 | 2026-09-17 | 8 | 100% |
| 10 | 1.8 | [P1-08] Dynamic 25-Outlet Publisher Directory & D1 Seeding | 3d | 2026-09-01 | 2026-09-17 | 9 | 100% |
| 11 | 1.9 | [P1-09] 10-15% Pure Presentation Frontend & Master Design System | 4d | 2026-09-01 | 2026-09-17 | 10 | 100% |
| 12 | 2 | **Phase 2: Personal Reader Fundamentals** | 18d | 2026-09-18 | 2026-09-28 |  |  |
| 13 | 2.1 | [P2-01] Local Subscriptions & Personal Feed Library | 3d | 2026-09-18 | 2026-09-28 |  |  |
| 14 | 2.2 | [P2-02] Folders & Collections Hierarchy | 3d | 2026-09-18 | 2026-09-28 | 13 |  |
| 15 | 2.3 | [P2-03] Starred & Saved Articles System | 2d | 2026-09-18 | 2026-09-28 | 14 |  |
| 16 | 2.4 | [P2-04] Mark Read / Unread & Reading History | 3d | 2026-09-18 | 2026-09-28 | 15 |  |
| 17 | 2.5 | [P2-05] OPML 2.0 Import & Export Engine | 3d | 2026-09-18 | 2026-09-28 | 16 |  |
| 18 | 2.6 | [P2-06] Instant Article Search & In-Memory Filter | 2d | 2026-09-18 | 2026-09-28 | 17 |  |
| 19 | 2.7 | [P2-07] Mobile-Optimized Reader Controls & Gestures | 2d | 2026-09-18 | 2026-09-28 | 18 |  |
| 20 | 3 | **Phase 3: Cloud Identity, D1 Persistence & Device Sync** | 12d | 2026-09-29 | 2026-10-08 |  |  |
| 21 | 3.1 | [P3-01] Passwordless Magic Link & OAuth Authentication | 4d | 2026-09-29 | 2026-10-08 |  |  |
| 22 | 3.2 | [P3-02] Bidirectional Cloud Sync Engine (D1 ◄► Local) | 4d | 2026-09-29 | 2026-10-08 | 21 |  |
| 23 | 3.3 | [P3-03] User Profile & Persistent Cloud Preferences | 2d | 2026-09-29 | 2026-10-08 | 22 |  |
| 24 | 3.4 | [P3-04] Multi-Device Session Management & Live Broadcast | 2d | 2026-09-29 | 2026-10-08 | 23 |  |
| 25 | 4 | **Phase 4: Search, Curation & Discovery Platform** | 14d | 2026-10-09 | 2026-10-20 |  |  |
| 26 | 4.1 | [P4-01] Global Feed Directory & Autodiscovery Search | 3d | 2026-10-09 | 2026-10-20 |  |  |
| 27 | 4.2 | [P4-02] Saved Searches & Dynamic Smart Feeds | 3d | 2026-10-09 | 2026-10-20 | 26 |  |
| 28 | 4.3 | [P4-03] Multi-Dimensional Article Tags & Categories | 3d | 2026-10-09 | 2026-10-20 | 27 |  |
| 29 | 4.4 | [P4-04] Public Collections & Shareable Reading Lists | 3d | 2026-10-09 | 2026-10-20 | 28 |  |
| 30 | 4.5 | [P4-05] Feed Health, Uptime & Latency Diagnostics | 2d | 2026-10-09 | 2026-10-20 | 29 |  |

Notes:
- 3: Registered feedometer.com on Hostinger, configured Cloudflare DNS, SSL/TLS certificates, custom apex/www domain routing, and Cloudflare Pages hosting.
- 4: Initialized GitHub repository, configured branch workflows, and implemented automated production minification engine (build.js) achieving -38% payload reduction.
- 5: Created feedometer-db D1 database, defined publishers, feeds, and notify_signups tables with unique indexes, and bound FEEDS_KV for multi-tier global caching.
- 6: Engineered stateless feedometer-worker.js with sub-10ms Edge Cache API (caches.default), KV fallback, /api/view, /api/catalog, /api/og, and /api/waitlist routes.
- 7: Built universal namespace-agnostic RSS 2.0 / Atom 1.0 parser with deep extraction for Media RSS (<media:content>, <media:thumbnail>), iTunes enclosures, and inline <img srcset>.
- 8: Implemented tracking parameter stripping (utm_*, fbclid), canonical article URL generation, atomic title-hash deduplication, and automated hate speech/extremism content filter.
- 9: Added non-blocking ctx.waitUntil OpenGraph hero image extraction with per-article KV caching (og:<url>, 7-day TTL), eliminating all client-side scraping loops.
- 10: Seeded 25 curated news publishers and sub-topics into D1 (seed_publishers.sql) with edge-cached /api/catalog route, stripping all hardcoded catalog JSON from frontend.
- 11: Refactored feedometer-viewer.js to pure presentation (fetch -> render), declared master :root design tokens, standardized typography H1-H6, and unified .btn / .badge schemas.
- 13: Implement local client-side subscription store using LocalStorage/IndexedDB. Allow users to subscribe/unsubscribe to feeds with instant visual confirmation and local library persistence without requiring login.
- 14: Build folder and collection management in the sidebar. Users can create, rename, delete folders and drag/move subscribed feeds into organized topic groups.
- 15: Add a 1-click Star/Bookmark button to article cards and full reader view. Provide a dedicated "Starred" view in the navigation bar with local bookmark storage.
- 16: Track read article URLs with visual dimming on opened cards. Display live unread badge counters per feed/folder and provide a searchable Reading History timeline.
- 17: Create standard OPML 2.0 XML parser and exporter. Allows users to import feeds/folders from Feedly, Inoreader, or Apple News in 1 click and export their library anytime.
- 18: Implement lightning-fast client-side keyword search across article titles, summaries, and authors within currently loaded feeds.
- 19: Refine mobile drawer navigation, swipe-to-star, and swipe-to-dismiss gesture interactions for touchscreens conforming to the Master Design System.
- 21: Create secure Cloudflare D1 users table and JWT authentication pipeline supporting 1-click Magic Email Login (via Resend/Postmark) and Google/GitHub OAuth.
- 22: Build automatic background synchronization between local state and Cloudflare D1 database. Merges offline feeds and ensures instant multi-device continuity.
- 23: Store user layout settings, reading theme (dark/light/sepia), refresh frequencies, and default start pages in user profile preferences.
- 24: Handle secure HTTP-only session cookies and cross-tab BroadcastChannel communication for instant multi-tab status synchronization.
- 26: Enhance feed search modal with category exploration, popularity rankings from D1, and real-time website URL RSS autodiscovery.
- 27: Allow users to save recurring search queries as dynamic "Smart Feeds" that automatically aggregate matching articles across all subscribed feeds.
- 28: Implement custom tag pills on articles with tag filtering, allowing multi-label cross-categorization outside traditional folder hierarchies.
- 29: Generate unique public share links for user-curated feed bundles or article collections with custom branded landing cards.
- 30: Provide an automated health monitoring dashboard showing feed response times, HTTP status codes, and last-successful-fetch timestamps.

| ID | WBS | Task | Duration | Start | Finish | Predecessors |
| --- | --- | --- | --- | --- | --- | --- |
| 31 | 5 | **Phase 5: SaaS Automation, Alerting & Integrations** | 19d | 2026-10-21 | 2026-11-03 |  |
| 32 | 5.1 | [P5-01] Edge Rules & Keyword Matcher Engine | 4d | 2026-10-21 | 2026-11-03 |  |
| 33 | 5.2 | [P5-02] Notification Dispatcher (Email & Web Push) | 4d | 2026-10-21 | 2026-11-03 | 32 |
| 34 | 5.3 | [P5-03] Outbound Webhook Dispatcher | 3d | 2026-10-21 | 2026-11-03 | 33 |
| 35 | 5.4 | [P5-04] SaaS Integrations (Slack, Discord, Teams, Zapier) | 4d | 2026-10-21 | 2026-11-03 | 34 |
| 36 | 5.5 | [P5-05] Newsletter Digest Builder Studio | 4d | 2026-10-21 | 2026-11-03 | 35 |
| 37 | 6 | **Phase 6: Edge AI Intelligence Layer** | 15d | 2026-11-04 | 2026-11-16 |  |
| 38 | 6.1 | [P6-01] 1-Click Executive AI Article Summaries | 4d | 2026-11-04 | 2026-11-16 |  |
| 39 | 6.2 | [P6-02] AI Topic Clustering & Semantic De-duplication | 4d | 2026-11-04 | 2026-11-16 | 38 |
| 40 | 6.3 | [P6-03] Brand, Competitor & Executive Tracker | 3d | 2026-11-04 | 2026-11-16 | 39 |
| 41 | 6.4 | [P6-04] AI Research Assistant & Interactive Q&A | 4d | 2026-11-04 | 2026-11-16 | 40 |
| 42 | 7 | **Phase 7: Multi-Tenant Enterprise, Workspaces & APIs** | 14d | 2026-11-17 | 2026-11-30 |  |
| 43 | 7.1 | [P7-01] Multi-Tenant Team Workspaces Architecture | 4d | 2026-11-17 | 2026-11-30 |  |
| 44 | 7.2 | [P7-02] Role-Based Access Control (Admin/Editor/Viewer) | 3d | 2026-11-17 | 2026-11-30 | 43 |
| 45 | 7.3 | [P7-03] Enterprise SSO (SAML / OIDC) & Audit Logs | 4d | 2026-11-17 | 2026-11-30 | 44 |
| 46 | 7.4 | [P7-04] Developer Public REST API & API Key Management | 3d | 2026-11-17 | 2026-11-30 | 45 |

Notes:
- 32: Build a serverless edge evaluation engine in Cloudflare Worker for regex keyword matching, author filters, and topic inclusion/exclusion rules.
- 33: Integrate real-time notification dispatching supporting Web Push API (VAPID) and instant email alerts via transactional mail API.
- 34: Trigger secure JSON POST webhook payloads to custom HTTP endpoints whenever high-priority keyword or filter rules match incoming articles.
- 35: Pre-built webhook connectors formatting article rich cards directly into Slack channels, Discord webhooks, Microsoft Teams, and Zapier triggers.
- 36: A visual newsletter creator that compiles top starred/curated articles of the week into a responsive HTML email digest.
- 38: Serverless LLM summarization pipeline via Cloudflare Workers AI (@cf/meta/llama-3-8b-instruct) generating concise 3-bullet executive takeaways.
- 39: Vector embedding generation via Workers AI (@cf/baai/bge-base-en-v1.5) and Cloudflare Vectorize to group cross-publisher articles on breaking stories into unified event clusters.
- 40: Automated entity extraction and sentiment analysis tracking specific companies, brand mentions, and executive announcements across global feeds.
- 41: Interactive AI chatbot enabling users to ask questions, extract key takeaways, and synthesize trends across saved article collections.
- 43: Implement multi-tenant workspace partitioning in Cloudflare D1 with workspace switcher, shared feed collections, and team member management.
- 44: Granular permissions granting Admins billing/member management, Editors feed/rule curation, and Viewers read-only dashboard access.
- 45: Single Sign-On integration via Cloudflare Access / Okta / Azure AD with comprehensive compliance audit logging for team actions.
- 46: Expose secure REST API with API key token generation, rate limiting, and OpenAPI/Swagger interactive documentation.
